# CRONOGRAMA_AMSA 07-10

Schedule from MS Project, 2013-10-07 to 2014-01-17.
Hewlett-Packard

## Calendars

- Estándar: Mon-Fri 09:00-13:00, 15:00-19:00; Sat-Sun off.

## Resources

| Resource |
| --- |
| gA |
| AMSA / gA |
| AMSA / gA (4 consultores) |
| AMSA / gA (2 consultores) |
| Responsables TI/BI/Datos/Integración/Infraestructura/Operación |
| 4 Consultores gA |
| 2 Consultores gA |
| Gerente de Proyecto AMSA |
| Responsable de Sistemas AMSA |
| Responsable AMSA TI/BI/Datos/Infraestructura/Operación |
| Controller AMSA Área T.I. |
| Responsables AMSA TI/BI/Datos/Integración/Infraestructura/Operación |
| Agustin Casal |
| Mario Gallo |
| José Luis Barraza |
| Rodrigo Ferradas |
| Carolina |
| Agustín |
| Mario |
| José Luis |
| María Fernanda |

## Schedule

| ID | WBS | Task | Type | Duration | Start | Finish | Predecessors | Total slack | Free slack | Constraint | Resources | Work | Recursos gA |
| --- | --- | --- | --- | --- | --- | --- | --- | --- | --- | --- | --- | --- | --- |
| 1 | 1 | **Proyecto AMSA** |  | 75d | 2013-10-07 | 2014-01-17 |  | 0d |  |  |  | 1718.27h |  |
| 2 | 1.1 | Preparación del Proyecto |  | 5d | 2013-10-07 | 2013-10-11 |  | 70d |  | start no earlier than 2013-10-07 | gA | 40h | gA |
| 3 | 1.2 | Alineamiento Estratégico |  | 10d | 2013-10-07 | 2013-10-18 |  | 65d |  | start no earlier than 2013-10-07 | gA | 80h | gA |
| 4 | 1.3 | **Levantamiento del Mapa de Sistemas** |  | 15d | 2013-10-14 | 2013-11-01 |  | 55d |  |  | gA | 588.27h | gA |
| 5 | 1.3.1 | Mapa de Aplicación Actual AMSA |  | 15d | 2013-10-14 | 2013-11-01 |  | 55d |  | start no earlier than 2013-10-14 | gA; Responsables AMSA TI/BI/Datos/Integración/Infraestructura/Operación [50%] | 180h | gA |
| 6 | 1.3.2 | Mapa de Aplicación Actual ESPERANZA |  | 5d | 2013-10-14 | 2013-10-18 |  | 57.01d | 0d | start no earlier than 2013-10-14 | Responsables AMSA TI/BI/Datos/Integración/Infraestructura/Operación [50%]; Agustin Casal [50%]; Mario Gallo [50%]; María Fernanda [50%] | 80h | gA (4 consultores) |
| 7 | 1.3.3 | Mapa de Aplicación Actual TESORO |  | 5d | 2013-10-21 | 2013-10-25 | 6 | 57.01d | 0d |  | Responsables AMSA TI/BI/Datos/Integración/Infraestructura/Operación [66.7%]; Mario Gallo [66.7%]; María Fernanda [67%] | 80.13h | gA (2 consultores) |
| 8 | 1.3.4 | Mapa de Aplicación Actual MICHILLA |  | 5d | 2013-10-21 | 2013-10-25 | 6 | 60d |  |  | Responsables AMSA TI/BI/Datos/Integración/Infraestructura/Operación [66.7%]; Agustin Casal [66.7%]; Rodrigo Ferradas [67%] | 80.13h | gA (2 consultores) |
| 9 | 1.3.5 | Mapa de Aplicación Actual MLP (LOS PELAMBRES) |  | 3d | 2013-10-28 | 2013-10-30 | 7 | 57.01d |  |  | Responsables AMSA TI/BI/Datos/Integración/Infraestructura/Operación [66.7%]; Mario Gallo [66.7%]; María Fernanda [67%] | 48h | gA (2 consultores) |
| 10 | 1.4 | Arquitectura de Solución |  | 10d | 2013-11-04 | 2013-11-15 |  | 45d | 0d | start no earlier than 2013-11-04 | gA; Responsables AMSA TI/BI/Datos/Integración/Infraestructura/Operación [50%] | 120h | gA |
| 11 | 1.5 | HITO 1: Mapa de Aplicativos y Arquitectura | milestone | 0d | 2013-11-15 | 2013-11-15 | 10 | 45d |  |  | gA |  |  |
| 12 | 1.6 | Estimación de Orden de Magnitud del Costo |  | 20d | 2013-10-07 | 2013-11-01 |  | 55d | 0d | start no earlier than 2013-10-07 | gA; Gerente de Proyecto AMSA [25%]; Responsable de Sistemas AMSA [25%] | 240h | gA |
| 13 | 1.7 | HITO 2: Orden de Magnitud de Presupuesto | milestone | 0d | 2013-11-01 | 2013-11-01 | 12 | 55d |  |  | gA |  | gA |
| 14 | 1.8 | Caso de Negocios (Business Case) |  | 15d | 2013-11-11 | 2013-11-29 |  | 35d | 0d | start no earlier than 2013-11-11 | gA; Responsable AMSA TI/BI/Datos/Infraestructura/Operación [50%]; Controller AMSA Área T.I. [25%] | 210h | gA |
| 15 | 1.9 | HITO 3: Caso de Negocios | milestone | 0d | 2013-11-29 | 2013-11-29 | 14 | 35d |  |  | Carolina; Agustín; Mario |  | gA |
| 16 | 1.10 | Generar RFP y Documentación |  | 55d | 2013-11-04 | 2014-01-17 |  | 0d |  | start no earlier than 2013-11-04 | AMSA / gA | 440h | gA |
| 17 | 1.11 | HITO 4: RFP y Cierre de Proyecto | milestone | 0d | 2014-01-17 | 2014-01-17 | 16 | 0d |  |  | José Luis; María Fernanda |  | gA |

Notes:
- 5: Recursos AMSA: Responsables TI/BI/Datos/Integración/Infraestructura/Operación
- 6: Recursos AMSA: Responsables TI/BI/Datos/Integración/Infraestructura/Operación
- 7: Recursos AMSA: Responsables TI/BI/Datos/Integración/Infraestructura/Operación
- 8: Recursos AMSA: Responsables TI/BI/Datos/Integración/Infraestructura/Operación
- 9: Recursos AMSA: Responsables TI/BI/Datos/Integración/Infraestructura/Operación
